| Critical | Finish | Name | OutlineNumber | PercentComplete | OutlineLevel | ParentTaskUID | _level | Duration | UID | Summary | Start | Milestone | isLeaf | PredecessorLink |
| --- | --- | --- | --- | --- | --- | --- | --- | --- | --- | --- | --- | --- | --- | --- |
| 0 | 2007-01-10T00:00:00 | 项目范围规划 | 1 | 0 | 1 | -1 | 1 | 8 | 1 | 1 | 2007-01-01T00:00:00 | 0 |  |  |
| 0 | 2007-02-07T00:00:00 | 分析/软件需求 | 2 | 40 | 1 | -1 | 1 | 20 | 7 | 1 | 2007-01-11T00:00:00 | 0 |  |  |
| 0 | 2007-01-18T23:23:59 | 行为需求分析 | 2.1 | 50 | 2 | 7 | 2 | 6 | 8 | 0 | 2007-01-11T00:00:00 | 0 | True | 6 1 |
| 0 | 2007-01-24T23:23:59 | 起草初步的软件规范 | 2.2 | 70 | 2 | 7 | 2 | 4 | 9 | 0 | 2007-01-19T00:00:00 | 0 | True | 8 1 |
| 0 | 2007-01-29T23:23:59 | 制定初步预算 | 2.3 | 30 | 2 | 7 | 2 | 3 | 10 | 0 | 2007-01-25T00:00:00 | 0 | True | 9 1 |
| 0 | 2007-01-30T23:23:59 | 工作组共同审阅软件规范/预算 | 2.4 | 20 | 2 | 7 | 2 | 1 | 11 | 0 | 2007-01-30T00:00:00 | 0 | True | 10 1 |
| 0 | 2007-01-31T23:23:59 | 根据反馈修改软件规范 | 2.5 | 0 | 2 | 7 | 2 | 1 | 12 | 0 | 2007-01-31T00:00:00 | 0 | True | 11 1 |
| 0 | 2007-02-01T23:23:59 | 制定交付期限 | 2.6 | 0 | 2 | 7 | 2 | 1 | 13 | 0 | 2007-02-01T00:00:00 | 0 | True | 12 1 |
| 0 | 2007-02-02T23:23:59 | 获得开展后续工作的批准(概念、期限和预算) | 2.7 | 0 | 2 | 7 | 2 | 1 | 14 | 0 | 2007-02-02T00:00:00 | 0 | True | 13 1 |
| 0 | 2007-02-06T23:23:59 | 获得所需资源 | 2.8 | 0 | 2 | 7 | 2 | 2 | 15 | 0 | 2007-02-05T00:00:00 | 0 | True | 14 1 |
| 0 | 2007-02-07T00:00:00 | 完成分析工作 | 2.9 | 0 | 2 | 7 | 2 | 0 | 16 | 0 | 2007-02-07T00:00:00 | 1 | True | 15 1 |
| 0 | 2007-03-08T00:00:00 | 设计 | 3 | 0 | 1 | -1 | 1 | 21 | 17 | 1 | 2007-02-08T00:00:00 | 0 |  |  |
| 0 | 2007-02-12T23:23:59 | 审阅初步的软件规范 | 3.1 | 0 | 2 | 17 | 2 | 3 | 18 | 0 | 2007-02-08T00:00:00 | 0 | True | 16 1 |
| 0 | 2007-02-20T23:23:59 | 制定功能规范 | 3.2 | 0 | 2 | 17 | 2 | 6 | 19 | 0 | 2007-02-13T00:00:00 | 0 | True | 18 1 |
| 0 | 2007-02-27T23:23:59 | 根据功能规范开发原型 | 3.3 | 0 | 2 | 17 | 2 | 5 | 20 | 0 | 2007-02-21T00:00:00 | 0 | True | 19 1 |
| 0 | 2007-03-02T23:23:59 | 审阅功能规范 | 3.4 | 0 | 2 | 17 | 2 | 3 | 21 | 0 | 2007-02-28T00:00:00 | 0 | True | 20 1 |
| 0 | 2007-03-06T23:23:59 | 根据反馈修改功能规范 | 3.5 | 0 | 2 | 17 | 2 | 2 | 22 | 0 | 2007-03-05T00:00:00 | 0 | True | 21 1 |
| 0 | 2007-03-07T23:23:59 | 获得开展后续工作的批准 | 3.6 | 0 | 2 | 17 | 2 | 1 | 23 | 0 | 2007-03-07T00:00:00 | 0 | True | 22 1 |
| 0 | 2007-03-08T00:00:00 | 完成设计工作 | 3.7 | 0 | 2 | 17 | 2 | 0 | 24 | 0 | 2007-03-08T00:00:00 | 1 | True | 23 1 |
| 0 | 2007-04-26T00:00:00 | 开发 | 4 | 0 | 1 | -1 | 1 | 35 | 25 | 1 | 2007-03-09T00:00:00 | 0 |  |  |
